# 1200V,140mΩ

Schedule from a web Gantt chart, 2024-07-16 to 2026-10-30.
Every day is a working day

## Schedule

| ID | WBS | Task | Duration | Start | Finish | Predecessors | Complete | Status |
| --- | --- | --- | --- | --- | --- | --- | --- | --- |
| 2 | 1 | Kick off | 6d | 2024-07-16 | 2024-07-21 |  | 100% | done |
| 3 | 2 | Design & Layout | 17d | 2024-07-22 | 2024-08-07 |  | 100% | done |
| 4 | 3 | FT 调试 | 315d | 2024-10-09 | 2025-08-19 |  | 100% | done |
| 5 | 4 | **Pre-Qual** | 80d | 2025-08-20 | 2025-11-07 |  | 100% | done |
| 6 | 4.1 | RE168H | 9d | 2025-08-20 | 2025-08-28 |  | 100% | done |
| 7 | 4.2 | RE504H | 20d | 2025-08-28 | 2025-09-16 |  | 100% | done |
| 8 | 4.3 | RE1008H | 53d | 2025-09-16 | 2025-11-07 |  | 100% | done |
| 9 | 5 | RSA | 428d | 2025-08-29 | 2026-10-30 | 6 | 37% |  |
| 10 | 6 | **Formal Qual(3lots)** | 167d | 2025-11-09 | 2026-04-24 |  | 2% |  |
| 11 | 6.1 | **1st qual lot** | 139d | 2025-11-10 | 2026-03-28 |  | 4% |  |
| 12 | 6.1.1 | Fab Process & F/O | 36d | 2025-11-10 | 2025-12-15 |  | 19% |  |
| 13 | 6.1.2 | PKG & FT | 45d | 2025-12-01 | 2026-01-14 |  |  | waiting |
| 14 | 6.1.3 | **RE验证** | 69d | 2026-01-19 | 2026-03-28 |  |  | waiting |
| 15 | 6.1.3.1 | RE168H | 12d | 2026-01-19 | 2026-01-30 |  |  | waiting |
| 16 | 6.1.3.2 | RE504H | 24d | 2026-01-31 | 2026-02-23 |  |  | waiting |
| 17 | 6.1.3.3 | RE1008H | 33d | 2026-02-24 | 2026-03-28 |  |  | waiting |
| 18 | 6.1.4 | AE验证 | 14d | 2026-01-15 | 2026-01-28 | 13 |  | waiting |
| 19 | 6.1.5 | Bench test(DS V0.5) | 14d | 2026-01-31 | 2026-02-13 | 15 |  | waiting |
| 20 | 6.2 | **2nd&3rd qual lot** | 167d | 2025-11-09 | 2026-04-24 |  |  | waiting |
| 21 | 6.2.1 | Fab Process &F/O | 36d | 2025-11-09 | 2025-12-14 |  |  | waiting |
| 22 | 6.2.2 | PKG & FT | 45d | 2025-12-15 | 2026-01-28 |  |  | waiting |
| 23 | 6.2.3 | **RE验证** | 75d | 2026-02-02 | 2026-04-17 |  |  | waiting |
| 24 | 6.2.3.1 | RE168H | 12d | 2026-02-02 | 2026-02-13 |  |  | waiting |
| 25 | 6.2.3.2 | RE504H | 24d | 2026-02-16 | 2026-03-11 |  |  | waiting |
| 26 | 6.2.3.3 | RE1008H | 33d | 2026-03-16 | 2026-04-17 |  |  | waiting |
| 27 | 6.2.4 | AE验证 | 14d | 2026-01-29 | 2026-02-11 | 22 |  | waiting |
| 28 | 6.2.5 | Bench test(DS V0.9) | 14d | 2026-02-14 | 2026-02-27 | 24 |  | waiting |
| 29 | 6.2.6 | DS V1.0 | 7d | 2026-04-18 | 2026-04-24 | 26 |  | waiting |
| 30 | 7 | RTP | 1d | 2026-04-24 | 2026-04-24 |  |  | waiting |
